# Linux-HA project

Schedule from Planner, 2005-01-15 to 2005-09-17.
Linux-HA

## Calendars

- Default: Mon-Fri 08:00-12:00, 13:00-17:00; Sat-Sun off.

## Resources

| Resource | Group |
| --- | --- |
| jorge | Corporacion Linux |
| Pedro Villavicencio | Corporacion Linux |
| Henriquez Rodrigo | Corporacion Linux |
| Andrew Beekhof | SUSE |
| Lars Marowsky-Bree | SUSE |
| Dave Blaschke | IBM.US |
| Zhao, Kai | IBM.CN |
| Huang, Zhen | IBM.CN |
| Sun, Jiang Dong | IBM.CN |
| Guochun Shi | NCSA |
| Alan Robertson | IBM.US |
| Lars Ellenberg | SUSE |

## Schedule

| ID | WBS | Task | Type | Duration | Start | Finish | Predecessors | Complete | Constraint | Resources | Work |
| --- | --- | --- | --- | --- | --- | --- | --- | --- | --- | --- | --- |
| 1 | 1 | **2.0.0 release** |  |  | 2005-01-15 | 2005-02-14 |  |  |  |  | 168h |
| 2 | 1.1 | 2.0.0 test preparation |  | 5d | 2005-01-15 | 2005-01-20 |  |  |  | Alan Robertson [80%] | 32h |
| 3 | 1.2 | 2.0.0 testing |  | 15d | 2005-01-25 | 2005-02-11 | 41, 2, 28SS+10h |  |  | Alan Robertson [33%] | 40h |
| 4 | 1.3 | 2.0.0 release process |  |  | 2005-02-11 | 2005-02-14 | 3 |  |  | Alan Robertson | 16h |
| 5 | 1.4 | 2.0.0 release | milestone | 0d | 2005-02-14 | 2005-02-14 | 4 |  |  |  |  |
| 6 | 2 | **2.0.1 release** |  |  | 2005-02-14 | 2005-03-24 | 1FS+1h |  | start no earlier than 2005-02-22 |  | 224h |
| 7 | 2.1 | 2.0.1 receive feedback, fix bugs from 2.0.0 |  | 15d | 2005-02-14 | 2005-03-07 |  |  |  |  |  |
| 8 | 2.2 | 2.0.1 test preparation |  |  | 2005-03-07 | 2005-03-08 | 7 |  |  |  | 8h |
| 9 | 2.3 | 2.0.1 testing |  |  | 2005-03-08 | 2005-03-22 | 45, 44, 43, 8 |  |  |  | 80h |
| 10 | 2.4 | 2.0.1 release process |  |  | 2005-03-22 | 2005-03-24 | 9 |  |  | Alan Robertson | 16h |
| 11 | 2.5 | 2.0.1 release | milestone | 0d | 2005-03-24 | 2005-03-24 | 10 |  |  |  |  |
| 12 | 3 | **2.0.2 release** |  |  | 2005-03-24 | 2005-05-18 | 6FS+1h |  | start no earlier than 2005-01-18 |  | 312h |
| 13 | 3.1 | 2.0.2 receive feedback, fix bugs from 2.0.1 |  | 20d | 2005-03-24 | 2005-04-21 |  |  |  |  |  |
| 14 | 3.2 | 2.0.2 test preparation |  |  | 2005-04-21 | 2005-04-25 | 13 |  |  |  | 16h |
| 15 | 3.3 | 2.0.2 testing |  | 15d | 2005-04-25 | 2005-05-16 | 49, 48, 47, 14 |  |  |  | 40h |
| 16 | 3.4 | 2.0.2 release process |  | 2d | 2005-05-16 | 2005-05-18 | 15 |  |  | Alan Robertson | 16h |
| 17 | 3.5 | 2.0.2 release | milestone | 0d | 2005-05-18 | 2005-05-18 | 16 |  |  |  |  |
| 18 | 4 | Date 1 |  | 118d | 2005-01-15 | 2005-06-29 |  |  |  |  |  |
| 19 | 5 | **2.0.3 release** |  |  | 2005-05-18 | 2005-09-06 |  |  |  |  | 632h |
| 20 | 5.1 | 2.0.3 receive feedback, fix bugs from 2.0.2 |  | 60d | 2005-05-18 | 2005-08-10 | 12 |  |  |  |  |
| 21 | 5.2 | 2.0.3 test preparation |  |  | 2005-08-10 | 2005-08-12 | 20 |  |  |  | 16h |
| 22 | 5.3 | 2.0.3 testing |  |  | 2005-08-12 | 2005-09-02 | 21 |  |  |  | 120h |
| 23 | 5.4 | 2.0.3 release process |  |  | 2005-09-02 | 2005-09-06 | 22 |  |  |  | 16h |
| 24 | 5.5 | 2.0.3 release | milestone | 0d | 2005-09-06 | 2005-09-06 | 23 |  |  |  |  |
| 25 | 6 | Date 2 |  | 174d | 2005-01-15 | 2005-09-15 |  |  |  |  |  |
| 26 | 7 | 229.19: Community (RH) Cluster Integration |  |  | 2005-01-15 | 2005-02-25 |  |  |  |  | 240h |
| 27 | 8 | 229.20: project leadership, etc. |  | 208d | 2005-01-15 | 2005-09-17 |  | 100% |  | Alan Robertson [20%] | 332.8h |
| 28 | 9 | 229.23: revised STONITH API |  |  | 2005-01-15 | 2005-02-01 |  |  |  | Sun, Jiang Dong | 120h |
| 29 | 10 | 1039.14: CIM support |  |  | 2005-01-15 | 2005-02-04 |  |  |  |  | 120h |
| 30 | 11 | 1040.04: Internal IBM support |  |  | 2005-01-15 | 2005-02-11 |  |  |  |  | 160h |
| 31 | 12 | 1040.07: Ongoing advocacy |  |  | 2005-01-15 | 2005-02-11 |  |  |  |  | 160h |
| 32 | 13 | 1041.19: Make IPC library thread-safe |  |  | 2005-01-15 | 2005-02-04 |  |  |  |  | 120h |
| 33 | 14 | 1041.21: Make apphbd library thread-safe |  |  | 2005-01-15 | 2005-01-28 |  |  |  |  | 80h |
| 34 | 15 | 1041.22: Make hbclient library thread-safe |  |  | 2005-01-15 | 2005-01-28 |  |  |  |  | 80h |
| 35 | 16 | 1041.24: MontaVista integration work |  |  | 2005-01-15 | 2005-02-04 |  |  |  |  | 120h |
| 36 | 17 | 1041.27: HPI Stonith Support for BladeCenter |  |  | 2005-01-15 | 2005-01-28 |  |  |  |  | 80h |
| 37 | 18 | 1041.28: AIS performance improvements |  |  | 2005-01-15 | 2005-01-17 |  |  |  |  |  |
| 38 | 19 | 1042.10: Certification with IBM storage |  |  | 2005-01-15 | 2005-02-11 |  |  |  |  | 160h |
| 39 | 20 | 1044.09: Create new test cases |  |  | 2005-01-15 | 2005-02-11 |  |  |  |  | 160h |
| 40 | 21 | 1044.11: Create certification process |  |  | 2005-01-15 | 2005-02-04 |  |  |  |  | 120h |
| 41 | 22 | Fencing Integration |  |  | 2005-01-15 | 2005-01-25 |  |  |  | Andrew Beekhof | 72h |
| 42 | 23 | General CRM bug fixes - 2.0.0 |  |  | 2005-01-25 | 2005-02-01 | 3SS+4h |  |  |  | 40h |
| 43 | 24 | Master / Slave incarnation states |  |  | 2005-02-01 | 2005-02-24 | 42FS+1h |  |  | Andrew Beekhof | 160h |
| 44 | 25 | Standby support |  |  | 2005-02-24 | 2005-03-02 | 43 |  |  | Andrew Beekhof | 40h |
| 45 | 26 | Quorum support |  |  | 2005-03-02 | 2005-03-08 | 44 |  |  | Andrew Beekhof | 40h |
| 46 | 27 | General CRM bug fixes - 2.0.1 |  |  | 2005-03-08 | 2005-03-11 | 9SS |  |  |  | 24h |
| 47 | 28 | Constraint lifespans |  |  | 2005-03-11 | 2005-03-29 | 46 |  |  | Andrew Beekhof | 120h |
| 48 | 29 | Misc CRM cleanups and enhancements - 1 |  |  | 2005-03-29 | 2005-04-09 | 47 |  |  | Andrew Beekhof | 80h |
| 49 | 30 | Misc CRM cleanups and enhancements - 2 |  |  | 2005-04-09 | 2005-04-21 | 48 |  |  | Andrew Beekhof | 80h |
| 50 | 31 | NUT STONITH plugin |  |  | 2005-01-15 | 2005-03-02 |  |  |  | Guochun Shi | 320h |
| 51 | 32 | CCM Maturation |  |  | 2005-01-15 | 2005-03-25 |  |  |  | Guochun Shi | 480h |
| 52 | 33 | Serial Link disconnect check |  |  | 2005-01-15 | 2005-02-07 |  |  |  | Guochun Shi | 160h |
| 53 | 34 | Total Ordered messaging |  |  | 2005-01-15 | 2005-03-02 |  |  |  | Guochun Shi | 320h |
| 54 | 35 | Resource Dependency Analysis |  |  | 2005-01-15 | 2005-01-17 |  |  |  |  |  |
| 55 | 36 | Delay (C.L. start) |  | 11d | 2005-01-15 | 2005-01-31 |  |  |  |  |  |
| 56 | 37 | config daemon architecture |  |  | 2005-01-31 | 2005-02-07 | 55 |  |  |  | 40h |
| 57 | 38 | config/status API design |  |  | 2005-02-07 | 2005-02-22 | 56, 55 |  |  |  | 88h |
| 58 | 39 | config/status Daemon (for GUI) |  |  | 2005-02-22 | 2005-03-22 | 57 |  |  | Henriquez Rodrigo | 160h |
| 59 | 40 | GTK GUI |  |  | 2005-02-22 | 2005-03-22 | 57 |  |  | Pedro Villavicencio | 160h |
| 60 | 41 | Other GUI? |  |  | 2005-01-15 | 2005-01-17 |  |  |  |  | 8h |
| 61 | 42 | 1042.06: (DONE) DRBD/DB2 performance testing |  |  | 2005-01-15 | 2005-01-17 |  |  |  |  |  |
| 62 | 43 | 1041.23: ?Make SAF libraries thread-safe |  |  | 2005-01-15 | 2005-02-11 |  |  |  |  | 160h |
| 63 | 44 | 1040.06: !Move web site to new format |  |  | 2005-01-15 | 2005-01-28 |  |  |  |  | 80h |
| 64 | 45 | 1044.08: ?Merge two test tools |  |  | 2005-01-15 | 2005-01-28 |  |  |  |  | 80h |
| 65 | 46 | 229.21: ?Internationalization |  |  | 2005-01-15 | 2005-02-11 |  |  |  |  | 160h |
| 66 | 47 | 1041.25: ?TIPC Integration |  |  | 2005-01-15 | 2005-02-04 |  |  |  |  | 120h |
| 67 | 48 | 1044.09: ?Creation of new test cases |  |  | 2005-01-15 | 2005-02-11 |  |  |  |  | 160h |
| 68 | 49 | 1044.10: ?Fully automated nightly tests |  |  | 2005-01-15 | 2005-02-04 |  |  |  |  | 120h |

Notes:
- 27: Ongoing...
- 35: Tue 18 Jan 2005, 21:45 This item is now VERY important.
- 37: Tue 18 Jan 2005, 21:44 This item has now probably become work to improve OpenAIS. But, we hadn't allocated any staff to it :-).
- 51: Wed 19 Jan 2005, 15:39 heal split brain, separate info gathering from reporting
- 62: This is likely to translate into integration with OpenAIS, and contributing to it.
- 63: Tue 18 Jan 2005, 21:54 - Some community resources have been identified who will do this.
- 65: Tue 18 Jan 2005, 21:39: / Probably won't get done. / The customer we were doing this for/with has backed out.
- 66: Tue 18 Jan 2005, 21:42 This may no longer make much sense, since we probably won't be doing major heartbeat-communication-based work.
